# House Build

Schedule from ProjectLibre, 2024-04-01 to 2025-12-31.

## Calendars

- Standard: Mon-Fri 08:00-12:00, 13:00-17:00; Sat-Sun off.

## Resources

| Resource |
| --- |
| Unassigned |

## Schedule

| ID | WBS | Task | Type | Duration | Start | Finish | Predecessors | Complete | Constraint |
| --- | --- | --- | --- | --- | --- | --- | --- | --- | --- |
| 1 | 1 | Contribution charge completion deadline | milestone | 0d | 2025-12-31 | 2025-12-31 |  |  | start no earlier than 2025-12-31 |
| 2 | 2 | Stamp duty commencement deadline | milestone | 0d | 2024-12-31 | 2024-12-31 |  |  | must finish on 2024-12-31 |
| 3 | 3 | Self build insurance ends | milestone | 0d | 2025-10-01 | 2025-10-01 |  |  | must finish on 2025-10-01 |
| 4 | 4 | **Prepare site for foundations install** |  | 132d | 2024-04-01 | 2024-10-01 |  | 9% | start no earlier than 2024-04-01 |
| 5 | 4.1 | Level and compact 200mm of T2 stone as subfoundation |  | 5d | 2024-04-01 | 2024-04-05 | 14 | 100% |  |
| 6 | 4.2 | General arrangement drawings |  | 15d | 2024-06-24 | 2024-07-12 |  |  | start no earlier than 2024-06-24 |
| 7 | 4.3 | Structural engineering drawings |  | 15d | 2024-07-15 | 2024-08-02 | 6 |  |  |
| 8 | 4.4 | Offsite manufacture of timber frames |  | 25d | 2024-08-05 | 2024-09-06 | 7 |  | start no earlier than 2024-06-01 |
| 9 | 4.5 | Surveyor to mark out service popups |  | 20d | 2024-08-05 | 2024-08-30 | 7 |  |  |
| 10 | 4.6 | Install pipes popping up into house with +/- 5mm tolerance |  | 2d | 2024-09-02 | 2024-09-03 | 5, 6, 9, 11 |  |  |
| 11 | 4.7 | Hardcore site for heavy vehicles |  | 5d | 2024-04-01 | 2024-04-05 |  | 100% |  |
| 12 | 4.8 | Scaffolding erected around house + loading bays (ticketed) |  | 2d | 2024-07-15 | 2024-07-16 | 6, 14 |  |  |
| 13 | 4.9 | Surveyor to return to check service popups again |  | 20d | 2024-09-04 | 2024-10-01 | 10 |  |  |
| 14 | 4.10 | Self build insurance |  | 0d | 2024-04-01 | 2024-04-01 |  | 100% |  |
| 15 | 5 | Foundations install |  | 5d | 2024-10-02 | 2024-10-08 | 4 |  |  |
| 16 | 6 | Roof glazing |  | 30d | 2024-08-05 | 2024-09-13 | 7 |  |  |
| 17 | 7 | Timber frame install |  | 5d | 2024-10-09 | 2024-10-15 | 15, 16 |  |  |
| 18 | 8 | **Exterior** |  | 75d | 2024-10-16 | 2025-01-28 | 17 |  |  |
| 19 | 8.1 | Wall glazing |  | 40d | 2024-10-16 | 2024-12-10 |  |  |  |
| 20 | 8.2 | Insulated thermal window brackets |  | 3d | 2024-12-11 | 2024-12-13 | 19 |  |  |
| 21 | 8.3 | Insulated window sills |  | 5d | 2024-12-11 | 2024-12-17 | 19 |  |  |
| 22 | 8.4 | Flat roof install |  | 2d | 2024-10-16 | 2024-10-17 |  |  |  |
| 23 | 8.5 | Roof slates + solar PV rails install |  | 5d | 2024-10-16 | 2024-10-22 |  |  |  |
| 24 | 8.6 | External cavity wiring |  | 2d | 2024-10-16 | 2024-10-17 |  |  |  |
| 25 | 8.7 | Entrance door |  | 1d | 2024-10-16 | 2024-10-16 |  |  |  |
| 26 | 8.8 | First air tightness blower test |  | 2d | 2024-12-18 | 2024-12-19 | 19, 20, 21, 23, 24, 25 |  |  |

| ID | WBS | Task | Duration | Start | Finish | Predecessors |
| --- | --- | --- | --- | --- | --- | --- |
| 27 | 8.9 | **Exterior leaf** | 15d | 2024-12-20 | 2025-01-09 | 26 |
| 28 | 8.9.1 | Blocks to west, south, east, some of north | 7d | 2024-12-20 | 2024-12-30 |  |
| 29 | 8.9.2 | Charred larch leaf to north | 3d | 2024-12-20 | 2024-12-24 |  |
| 30 | 8.9.3 | Fascia and soffit | 5d | 2024-12-20 | 2024-12-26 |  |
| 31 | 8.9.4 | External leaf render | 10d | 2024-12-27 | 2025-01-09 | 30 |
| 32 | 8.10 | **After remove scaffolding** | 13d | 2025-01-10 | 2025-01-28 | 27 |
| 33 | 8.10.1 | **Exterior services** | 5d | 2025-01-10 | 2025-01-16 |  |
| 34 | 8.10.1.1 | Soakaways and SUDS boxes | 2d | 2025-01-10 | 2025-01-13 |  |
| 35 | 8.10.1.2 | Exterior foulwater and stormwater | 5d | 2025-01-10 | 2025-01-16 |  |
| 36 | 8.10.1.3 | Bury 150m of brine loop pipe for ventilation | 2d | 2025-01-10 | 2025-01-13 |  |
| 37 | 8.10.1.4 | Suspended rainwater harvesting tanks | 1d | 2025-01-10 | 2025-01-10 |  |
| 38 | 8.10.2 | Footpaths and patio | 5d | 2025-01-17 | 2025-01-23 | 33 |
| 39 | 8.10.3 | Driveway | 3d | 2025-01-24 | 2025-01-28 | 38 |
| 40 | 9 | Construct rear earthern mound | 2d | 2025-01-14 | 2025-01-15 | 36 |
| 41 | 10 | Complete walled garden after filling with topsoil | 2d | 2025-01-24 | 2025-01-27 | 36, 38 |
| 42 | 11 | Level ground ready for grass seeding | 1d | 2025-01-28 | 2025-01-28 | 38, 40, 41 |
| 43 | 12 | **Interior** | 110d | 2024-10-16 | 2025-03-18 | 17 |
| 44 | 12.1 | **First fix** | 74d | 2024-10-16 | 2025-01-27 |  |
| 45 | 12.1.1 | Stairs | 2d | 2024-10-16 | 2024-10-17 |  |
| 46 | 12.1.2 | First fix internal AC wiring | 10d | 2024-12-11 | 2024-12-24 | 19, 24, 25 |
| 47 | 12.1.3 | **First fix internal DC wiring** | 30d | 2024-12-11 | 2025-01-21 | 19 |
| 48 | 12.1.3.1 | 24v DC wiring | 10d | 2024-12-11 | 2024-12-24 |  |
| 49 | 12.1.3.2 | 9v DC wiring | 10d | 2024-12-25 | 2025-01-07 | 48 |
| 50 | 12.1.3.3 | 54v DC wiring + ethernet | 10d | 2025-01-08 | 2025-01-21 | 49 |

| ID | WBS | Task | Duration | Start | Finish | Predecessors |
| --- | --- | --- | --- | --- | --- | --- |
| 51 | 12.1.4 | **First fix internal plumbing** | 10d | 2024-12-11 | 2024-12-24 | 19 |
| 52 | 12.1.4.1 | Water softener | 1d | 2024-12-11 | 2024-12-11 |  |
| 53 | 12.1.4.2 | Reverse osmosis unit | 1d | 2024-12-11 | 2024-12-11 |  |
| 54 | 12.1.4.3 | Underfloor heating | 3d | 2024-12-11 | 2024-12-13 |  |
| 55 | 12.1.4.4 | Thermal store | 10d | 2024-12-11 | 2024-12-24 |  |
| 56 | 12.1.5 | Ventilation system | 10d | 2025-01-14 | 2025-01-27 | 36, 46, 48, 55 |
| 57 | 12.1.6 | Fire mist suppression system | 1d | 2024-12-25 | 2024-12-25 | 51 |
| 58 | 12.1.7 | Paint steel its final colour | 5d | 2024-10-16 | 2024-10-22 |  |
| 59 | 12.2 | Second air tightness blower test | 1d | 2025-01-28 | 2025-01-28 | 44 |
| 60 | 12.3 | Install plasterboard and skim | 10d | 2025-01-29 | 2025-02-11 | 59 |
| 61 | 12.4 | Paint everything white | 10d | 2025-02-12 | 2025-02-25 | 60 |
| 62 | 12.5 | **Second fix** | 15d | 2025-02-26 | 2025-03-18 | 61 |
| 63 | 12.5.1 | Affix all sockets and switches and lights | 5d | 2025-02-26 | 2025-03-04 |  |
| 64 | 12.5.2 | Install showers, baths and tiling for them | 10d | 2025-02-26 | 2025-03-11 |  |
| 65 | 12.5.3 | Install sanitaryware | 5d | 2025-02-26 | 2025-03-04 |  |
| 66 | 12.5.4 | Kitchen | 5d | 2025-02-26 | 2025-03-04 |  |
| 67 | 12.5.5 | Flooring | 15d | 2025-02-26 | 2025-03-18 |  |
| 68 | 12.5.6 | Wardrobes, book cases, shelving | 15d | 2025-02-26 | 2025-03-18 |  |
| 69 | 12.5.7 | Glass ballustrading for bridge and stairs | 3d | 2025-02-26 | 2025-02-28 |  |
